Schedule from GanttProject, 2013-04-01 to 2013-09-23.

## Calendars

- Project calendar: Mon-Fri working; Sat-Sun off.

## Resources

| Resource |
| --- |
| Björn (SYSTOPIA) |
| Paul (delius) |
| Olaf (SfE) |
| Xavier (TttP) |
| Joe (JMA Consulting) |
| Fabian (SYSTOPIA) |

## Schedule

| ID | WBS | Task | Duration | Start | Finish | Predecessors | Complete | Resources |
| --- | --- | --- | --- | --- | --- | --- | --- | --- |
| 1 | 1 | **Definition Feature Requirements** | 17d | 2013-04-01 | 2013-04-23 |  | 100% |  |
| 2 | 1.1 | User Stories & required Features SYSTOPIA | 17d | 2013-04-01 | 2013-04-23 |  | 100% |  |
| 3 | 1.2 | User & required Features delius | 17d | 2013-04-01 | 2013-04-23 |  | 100% |  |
| 4 | 1.3 | User & required Features SfE | 17d | 2013-04-01 | 2013-04-23 |  | 100% |  |
| 5 | 2 | **Data Model** | 28d | 2013-04-01 | 2013-05-08 |  | 47% |  |
| 6 | 2.1 | data model SEPA | 23d | 2013-04-01 | 2013-05-01 |  | 70% | Paul (delius) |
| 7 | 2.2 | data model CiviBanking | 23d | 2013-04-01 | 2013-05-01 |  | 25% |  |
| 8 | 2.3 | XML & DAO generation SEPA | 5d | 2013-05-02 | 2013-05-08 | 6 | 80% | Paul (delius) |
| 9 | 2.4 | XML & DAO generation CiviBanking | 3d | 2013-05-02 | 2013-05-06 | 6 |  | Björn (SYSTOPIA) |
| 10 | 3 | **API / Interfaces** | 28d | 2013-05-06 | 2013-06-12 |  |  |  |
| 11 | 3.1 | accounts API | 3d | 2013-05-23 | 2013-05-27 | 8 |  | Björn (SYSTOPIA); Xavier (TttP) |
| 12 | 3.2 | payments / statements API | 15d | 2013-05-23 | 2013-06-12 | 8 |  | Björn (SYSTOPIA); Xavier (TttP) |
| 13 | 3.3 | SEPA API? (mandates, transactions, modes...) | 1d | 2013-05-23 | 2013-05-23 | 8 |  | Olaf (SfE) |
| 14 | 3.4 | import / export plugin interfaces | 5d | 2013-05-06 | 2013-05-10 |  |  | Björn (SYSTOPIA) |
| 15 | 3.5 | matcher plugin interfaces | 5d | 2013-05-06 | 2013-05-10 |  |  | Björn (SYSTOPIA) |
| 16 | 4 | **CiviBanking** | 119d | 2013-04-01 | 2013-09-12 |  | 12% |  |
| 17 | 4.1 | design mockups | 12d | 2013-04-01 | 2013-04-16 |  | 100% |  |
| 18 | 4.2 | Payment Importer | 15d | 2013-05-24 | 2013-06-13 | 13 |  | Björn (SYSTOPIA) |
| 19 | 4.3 | Payment Manager | 10d | 2013-06-14 | 2013-06-27 | 12, 18 |  | Björn (SYSTOPIA) |
| 20 | 4.4 | Matching engine | 10d | 2013-06-28 | 2013-07-11 | 12, 19 |  | Björn (SYSTOPIA) |
| 21 | 4.5 | Suggestion Workbench | 20d | 2013-07-12 | 2013-08-08 | 12, 15, 20 |  | Björn (SYSTOPIA) |
| 22 | 4.6 | Statement Manager | 15d | 2013-08-09 | 2013-08-29 | 12, 21 |  | Björn (SYSTOPIA) |
| 23 | 4.7 | Payment Exporter | 10d | 2013-08-30 | 2013-09-12 | 13, 22 |  | Björn (SYSTOPIA) |
| 24 | 4.8 | BankAccount Manager | 15d | 2013-05-28 | 2013-06-17 | 11 |  | Olaf (SfE) |

| ID | WBS | Task | Duration | Start | Finish | Predecessors | Resources |
| --- | --- | --- | --- | --- | --- | --- | --- |
| 25 | 5 | **CiviSEPA** | 73d | 2013-06-13 | 2013-09-23 |  |  |
| 26 | 5.1 | mandate manager | 15d | 2013-06-13 | 2013-07-03 | 12, 13 | Olaf (SfE) |
| 27 | 5.2 | SDD Payment Processor basics | 10d | 2013-07-04 | 2013-07-17 | 13, 26 | Olaf (SfE) |
| 28 | 5.3 | XML Exporter | 5d | 2013-07-18 | 2013-07-24 | 13, 27 | Paul (delius); Olaf (SfE) |
| 29 | 5.4 | Batch Manager | 13d | 2013-07-25 | 2013-08-12 | 13, 28 | Olaf (SfE) |
| 30 | 5.5 | Mandate Documenter | 10d | 2013-08-13 | 2013-08-26 | 13, 29 | Olaf (SfE) |
| 31 | 5.6 | Mandate Import | 10d | 2013-08-27 | 2013-09-09 | 13, 30 | Olaf (SfE) |
| 32 | 5.7 | finish SDD Payment Processor | 10d | 2013-09-10 | 2013-09-23 | 27, 31 | Olaf (SfE) |
| 33 | 6 | Code Sprint | 2d | 2013-06-13 | 2013-06-14 | 8, 10 |  |
| 34 | 7 | automate pre-notification | 10d | 2013-06-17 | 2013-06-28 | 33 |  |
